# PeNcIL – Planirani raspored aktivnosti

Schedule from MS Project, 2021-10-25 to 2022-01-09, 4 hours a day.
SWETeam

## Calendars

- Standard: Mon-Sun 16:00-20:00.

## Resources

| Resource |
| --- |
| Architect |
| Architecture Reviewer |
| Business-Process Analyst |
| Business Designer |
| Business-Model Reviewer |
| Code Reviewer |
| Configuration Manager |
| Course Developer |
| Database Designer |
| Deployment Manager |
| Design Reviewer |
| Designer |
| Implementer |
| Integration Tester |
| Performance Tester |
| Process Engineer |
| Project Manager |
| Requirements Reviewer |
| Stakeholder |
| System Administrator |
| System Analyst |
| System Integrator |
| System Tester |
| Technical Writer |
| Test Designer |
| Tool Smith |
| Use-Case Author |
| User-Interface Designer |
| Almir Asotić |
| Aldina Avdić |

## Schedule

| ID | WBS | Task | Type | Duration | Start | Finish | Predecessors | Baseline start | Baseline finish | Baseline duration | Total slack | Free slack | Constraint | Resources | Work |
| --- | --- | --- | --- | --- | --- | --- | --- | --- | --- | --- | --- | --- | --- | --- | --- |
| 1 | 1 | **Očekivani rezultati** |  | 77d | 2021-10-25 | 2022-01-09 |  | 1998-06-11 | 1998-10-19 | 186d | 0d |  |  | Almir Asotić [50%]; Aldina Avdić [50%] | 308h |
| 2 | 1.1 | Početak projekta | milestone | 0d | 2021-10-25 | 2021-10-25 | 16SS | 1998-06-11 | 1998-06-11 | 0d | 77d |  | start no earlier than 2017-10-17 | Almir Asotić [50%]; Aldina Avdić [50%] |  |
| 3 | 1.2 | Vizija sistema | milestone | 0d | 2021-10-31 | 2021-10-31 | 19 | 1998-06-17 | 1998-06-17 | 0d | 70d |  |  | Almir Asotić [50%]; Aldina Avdić [50%] |  |
| 4 | 1.3 | Dokument o zahtevima | milestone | 0d | 2021-11-14 | 2021-11-14 | 25 |  |  |  | 56d |  |  | Almir Asotić [50%]; Aldina Avdić [50%] |  |
| 5 | 1.4 | Arhitekturni prototip | milestone | 0d | 2021-11-17 | 2021-11-17 | 26 |  |  |  | 53d |  |  | Almir Asotić [50%]; Aldina Avdić [50%] |  |
| 6 | 1.5 | Prototip korisničkog interfejsa | milestone | 0d | 2021-11-21 | 2021-11-21 | 28 |  |  |  | 49d |  |  | Almir Asotić [50%]; Aldina Avdić [50%] |  |
| 7 | 1.6 | Arhitekturni projekat | milestone | 0d | 2021-11-28 | 2021-11-28 | 29 | 1998-08-20 | 1998-08-20 | 0d | 42d |  |  | Almir Asotić [50%]; Aldina Avdić [50%] |  |
| 8 | 1.7 | Detaljni projekat | milestone | 0d | 2021-12-12 | 2021-12-12 | 33 | 1998-10-06 | 1998-10-06 | 0d | 28d |  |  | Almir Asotić [50%]; Aldina Avdić [50%] |  |
| 9 | 1.8 | Beta verzija | milestone | 0d | 2021-12-15 | 2021-12-15 | 34 | 1998-10-19 | 1998-10-19 | 0d | 25d |  |  | Almir Asotić [50%]; Aldina Avdić [50%] |  |
| 10 | 1.9 | Plan testiranja | milestone | 0d | 2021-12-19 | 2021-12-19 | 35 |  |  |  | 21d |  |  | Almir Asotić [50%]; Aldina Avdić [50%] |  |
| 11 | 1.10 | Izveštaj o testiranju | milestone | 0d | 2021-12-26 | 2021-12-26 | 41 |  |  |  | 14d |  |  | Almir Asotić [50%]; Aldina Avdić [50%] |  |
| 12 | 1.11 | Konačna verzija | milestone | 0d | 2021-12-26 | 2021-12-26 | 38 |  |  |  | 14d |  |  | Almir Asotić [50%]; Aldina Avdić [50%] |  |
| 13 | 1.12 | Korisničko uputstvo | milestone | 0d | 2022-01-08 | 2022-01-08 | 46 |  |  |  | 1d |  |  | Almir Asotić [50%]; Aldina Avdić [50%] |  |
| 14 | 1.13 | Prezentacija proizvoda | milestone | 0d | 2022-01-09 | 2022-01-09 | 44 |  |  |  | 0d |  |  | Almir Asotić [50%]; Aldina Avdić [50%] |  |
| 16 | 2 | **Faza planiranja projekta** |  | 14d | 2021-10-25 | 2021-11-07 |  | 1998-06-11 | 1998-06-17 | 10d | 0d |  |  | Almir Asotić [50%]; Aldina Avdić [50%] | 168h |
| 17 | 2.1 | **Preliminarna iteracija** |  | 14d | 2021-10-25 | 2021-11-07 |  | 1998-06-11 | 1998-06-17 | 10d | 0d |  |  | Almir Asotić [50%]; Aldina Avdić [50%] | 112h |
| 18 | 2.1.1 | Definisanje zahteva |  | 3d | 2021-10-25 | 2021-10-27 |  | 1998-06-11 | 1998-06-15 | 6d | 0d |  | start no earlier than 2021-10-25 | Almir Asotić [50%]; Aldina Avdić [50%] | 12h |
| 19 | 2.1.2 | Izrada vizije sistema |  | 4d | 2021-10-28 | 2021-10-31 | 18 | 1998-06-11 | 1998-06-17 | 10d | 0d |  |  | Almir Asotić [50%]; Aldina Avdić [50%] | 16h |
| 20 | 2.1.3 | Modelovanje domena |  | 1d | 2021-11-01 | 2021-11-01 | 19 | 1998-06-11 | 1998-06-17 | 10d | 0d |  |  | Almir Asotić [50%]; Aldina Avdić [50%] | 4h |
| 21 | 2.1.4 | Analiza slučajeva korišćenja |  | 6d | 2021-11-02 | 2021-11-07 | 20 | 1998-06-19 | 1998-06-23 | 6d | 0d |  |  | Almir Asotić [50%]; Aldina Avdić [50%] | 24h |
| 23 | 3 | **Faza razrade projekta** |  | 21d | 2021-11-08 | 2021-11-28 | 16 | 1998-06-18 | 1998-08-20 | 92d | 0d |  |  | Almir Asotić [50%]; Aldina Avdić [50%] | 280h |
| 24 | 3.1 | **Iteracija R1 - Razvoj arhitekturnog prototipa** |  | 21d | 2021-11-08 | 2021-11-28 |  | 1998-06-18 | 1998-07-20 | 46d | 0d |  |  | Almir Asotić [50%]; Aldina Avdić [50%] | 196h |
| 25 | 3.1.1 | Izrada dokumenta o zahtevima |  | 7d | 2021-11-08 | 2021-11-14 |  | 1998-06-19 | 1998-06-25 | 10d | 14d | 0d |  | Almir Asotić [50%]; Aldina Avdić [50%] | 28h |
| 26 | 3.1.2 | Implementacija arhitekturnog prototipa |  | 10d | 2021-11-08 | 2021-11-17 |  | 1998-07-01 | 1998-07-10 | 16d | 0d |  |  | Almir Asotić [50%]; Aldina Avdić [50%] | 40h |
| 27 | 3.1.3 | Testiranje arhitekture |  | 1d | 2021-11-18 | 2021-11-18 | 26 | 1998-07-08 | 1998-07-16 | 14d | 0d |  |  | Almir Asotić [50%]; Aldina Avdić [50%] | 4h |
| 28 | 3.1.4 | Implementacija prototipa korisničkog interfejsa |  | 3d | 2021-11-19 | 2021-11-21 | 27 | 1998-06-18 | 1998-07-20 | 46d | 0d |  |  | Almir Asotić [50%]; Aldina Avdić [50%] | 12h |
| 29 | 3.1.5 | Izrada arhitekturnog projekta |  | 7d | 2021-11-22 | 2021-11-28 | 28 | 1998-06-23 | 1998-07-06 | 20d | 0d |  |  | Almir Asotić [50%]; Aldina Avdić [50%] | 28h |

| ID | WBS | Task | Duration | Start | Finish | Predecessors | Baseline start | Baseline finish | Baseline duration | Total slack | Free slack | Resources | Work |
| --- | --- | --- | --- | --- | --- | --- | --- | --- | --- | --- | --- | --- | --- |
| 31 | 4 | **Faza izrade projekta** | 28d | 2021-11-29 | 2021-12-26 | 23 | 1998-08-21 | 1998-10-06 | 66d | 0d |  | Almir Asotić [50%]; Aldina Avdić [50%] | 404h |
| 32 | 4.1 | **Iteracija I1 - Razvoj beta verzije** | 23d | 2021-11-29 | 2021-12-21 |  | 1998-08-21 | 1998-09-04 | 22d | 0d |  | Almir Asotić [50%]; Aldina Avdić [50%] | 248h |
| 33 | 4.1.1 | Izrada detaljnog projekta | 14d | 2021-11-29 | 2021-12-12 |  |  |  |  | 9d | 0d | Almir Asotić [50%]; Aldina Avdić [50%] | 56h |
| 34 | 4.1.2 | Implementacija beta verzije | 17d | 2021-11-29 | 2021-12-15 |  | 1998-08-24 | 1998-08-31 | 12d | 0d |  | Almir Asotić [50%]; Aldina Avdić [50%] | 68h |
| 35 | 4.1.3 | Izrada plana testiranja | 4d | 2021-12-16 | 2021-12-19 | 34 |  |  |  | 0d |  | Almir Asotić [50%]; Aldina Avdić [50%] | 16h |
| 36 | 4.1.4 | Testiranje sistema | 2d | 2021-12-20 | 2021-12-21 | 35 | 1998-08-24 | 1998-09-02 | 16d | 0d |  | Almir Asotić [50%]; Aldina Avdić [50%] | 8h |
| 37 | 4.1.5 | Izrada izveštaja o testiranju | 2d | 2021-12-20 | 2021-12-21 | 35 | 1998-08-21 | 1998-09-04 | 22d | 0d |  | Almir Asotić [50%]; Aldina Avdić [50%] | 8h |
| 38 | 4.2 | **Iteracija I2 - Razvoj konačne verzije** | 5d | 2021-12-22 | 2021-12-26 | 32 | 1998-09-07 | 1998-09-21 | 22d | 0d |  | Almir Asotić [50%]; Aldina Avdić [50%] | 44h |
| 39 | 4.2.1 | Implementacija konačne verzije | 4d | 2021-12-22 | 2021-12-25 |  | 1998-09-08 | 1998-09-15 | 12d | 0d |  | Almir Asotić [50%]; Aldina Avdić [50%] | 16h |
| 40 | 4.2.2 | Testiranje konačne verzije | 1d | 2021-12-26 | 2021-12-26 | 39 | 1998-09-08 | 1998-09-17 | 16d | 0d |  | Almir Asotić [50%]; Aldina Avdić [50%] | 4h |
| 41 | 4.2.3 | Ažuriranje izveštaja o testiranju | 1d | 2021-12-26 | 2021-12-26 | 39 | 1998-09-07 | 1998-09-21 | 22d | 0d |  | Almir Asotić [50%]; Aldina Avdić [50%] | 4h |
| 43 | 5 | **Faza okončanja projekta** | 14d | 2021-12-27 | 2022-01-09 | 38 | 1998-10-07 | 1998-10-19 | 18d | 0d |  | Almir Asotić [50%]; Aldina Avdić [50%] | 168h |
| 44 | 5.1 | **Iteracija O1 - Instalacija sistema** | 14d | 2021-12-27 | 2022-01-09 |  | 1998-10-07 | 1998-10-19 | 18d | 0d |  | Almir Asotić [50%]; Aldina Avdić [50%] | 112h |
| 45 | 5.1.1 | Sređivanje projektne dokumentacije | 7d | 2021-12-27 | 2022-01-02 |  |  |  |  | 0d |  | Almir Asotić [50%]; Aldina Avdić [50%] | 28h |
| 46 | 5.1.2 | Izrada korisničkog uputstva | 6d | 2022-01-03 | 2022-01-08 | 45 | 1998-10-07 | 1998-10-19 | 18d | 0d |  | Almir Asotić [50%]; Aldina Avdić [50%] | 24h |
| 47 | 5.1.3 | Instalacija sistema | 1d | 2022-01-09 | 2022-01-09 | 46 |  |  |  | 0d |  | Almir Asotić [50%]; Aldina Avdić [50%] | 4h |
